# Conference Center Project

Schedule from MS Project, 2016-10-03 to 2017-02-28, A marks actual dates.
MonteVista Solutions, Inc.

## Calendars

- Standard: Mon-Fri 08:00-12:00, 13:00-17:00; Sat-Sun off.

## Schedule

| ID | WBS | Task | Type | Duration | Start | Finish | Predecessors | Complete | Remaining | Total slack | Free slack |
| --- | --- | --- | --- | --- | --- | --- | --- | --- | --- | --- | --- |
| 1 | 1 | Start project | milestone | 0d | 2016-10-03 | 2016-10-03 |  |  |  | 107d |  |
| 2 | 2 | **Update conference center** |  | 107d | 2016-10-03 A | 2017-02-28 |  | 33% | 72d | 0d |  |
| 3 | 2.1 | **Update conference ctr technology** |  | 107d | 2016-10-03 A | 2017-02-28 |  | 64% | 38.91d | 0d |  |
| 4 | 2.1.1 | Specify requirements |  | 2w | 2016-10-03 A | 2016-10-14 A | 1 | 100% |  |  |  |
| 5 | 2.1.2 | **Contract with vendor** |  | 20d | 2016-10-17 A | 2016-11-11 A |  | 100% |  |  |  |
| 6 | 2.1.2.1 | Obtain proposals |  | 2w | 2016-10-17 A | 2016-10-28 A | 4 | 100% |  |  |  |
| 7 | 2.1.2.2 | Select vendor |  | 5d | 2016-10-31 A | 2016-11-04 A | 6 | 100% |  |  |  |
| 8 | 2.1.2.3 | Negotiate |  | 4d | 2016-11-07 A | 2016-11-10 A | 7 | 100% |  |  |  |
| 9 | 2.1.2.4 | Sign contracts |  | 1d | 2016-11-11 A | 2016-11-11 A | 8 | 100% |  |  |  |
| 10 | 2.1.3 | Design update |  | 1w | 2016-11-14 A | 2016-11-18 A | 9 | 100% |  |  |  |
| 11 | 2.1.4 | Conference center design complete | milestone | 0d | 2016-11-18 A | 2016-11-18 A | 10 | 100% |  |  |  |
| 12 | 2.1.5 | **Install technology** |  | 20d | 2017-02-01 | 2017-02-28 |  |  |  | 0d |  |
| 13 | 2.1.5.1 | Run cables |  | 1w | 2017-02-01 | 2017-02-07 | 10, 23 |  |  | 0d |  |
| 14 | 2.1.5.2 | Set up equipment racks |  | 2d | 2017-02-08 | 2017-02-09 | 13 |  |  | 0d |  |
| 15 | 2.1.5.3 | Place equipment |  | 3d | 2017-02-10 | 2017-02-14 | 14 |  |  | 0d |  |
| 16 | 2.1.5.4 | Configure equipment |  | 4d | 2017-02-15 | 2017-02-20 | 15 |  |  | 0d |  |
| 17 | 2.1.5.5 | Connect to network |  | 3d | 2017-02-21 | 2017-02-23 | 16 |  |  | 0d |  |
| 18 | 2.1.5.6 | Test |  | 3d | 2017-02-24 | 2017-02-28 | 17 |  |  | 0d |  |
| 19 | 2.2 | Technology installed | milestone | 0d | 2017-02-28 | 2017-02-28 | 18 |  |  | 0d |  |
| 20 | 2.3 | **Remodel spaces** |  | 52d | 2016-11-21 | 2017-01-31 |  |  |  | 0d |  |
| 21 | 2.3.1 | Design spaces |  | 4w | 2016-11-21 | 2016-12-16 | 10 |  |  | 0d |  |
| 22 | 2.3.2 | Construct |  | 6w | 2016-12-19 | 2017-01-27 | 21 |  |  | 0d |  |
| 23 | 2.3.3 | Complete walkthrough |  | 2d | 2017-01-30 | 2017-01-31 | 22 |  |  | 0d |  |
| 24 | 3 | **Update hotel room technology** |  | 107d | 2016-10-03 | 2017-02-28 |  |  |  | 0d |  |
| 25 | 3.1 | Specify requirements |  | 2w | 2016-10-03 | 2016-10-14 | 4SS |  |  | 42d | 0d |
| 26 | 3.2 | Contract with vendor |  | 4w | 2016-10-17 | 2016-11-11 | 25 |  |  | 42d | 0d |
| 27 | 3.3 | Design update |  | 1w | 2016-11-14 | 2016-11-18 | 26 |  |  | 42d | 0d |
| 28 | 3.4 | Install technology |  | 6w | 2016-11-21 | 2016-12-30 | 27 |  |  | 42d |  |
| 29 | 3.5 | Project complete | milestone | 0d | 2017-02-28 | 2017-02-28 | 28, 18 |  |  | 0d |  |
