# Conference Center Project

Schedule from MS Project, 2016-10-03 to 2017-06-14, costs in $, A marks actual dates.
MonteVista Solutions, Inc.

## Calendars

- Standard: Mon-Fri 08:00-12:00, 13:00-17:00; Sat-Sun off.

## Resources

| Resource | Rate |
| --- | --- |
| PM | 150 |
| PM Assistant | 100 |
| Conf Ctr Director | 150 |
| IT Director | 150 |
| IT Lead | 100 |
| IT Contractor | 100 |
| Construction Team | 60 |
| Equipment |  |
| Designer | 150 |
| Materials |  |

## Schedule

| ID | WBS | Task | Type | Duration | Start | Finish | Predecessors | Complete | Remaining | Baseline start | Baseline finish | Baseline duration | Total slack | Free slack | Resources | Work | Actual work | Cost | Baseline cost | Actual cost |
| --- | --- | --- | --- | --- | --- | --- | --- | --- | --- | --- | --- | --- | --- | --- | --- | --- | --- | --- | --- | --- |
| 1 | 1 | Start project | milestone | 0d | 2016-10-03 | 2016-10-03 |  |  |  | 2016-10-03 | 2016-10-03 | 0d | 107d |  |  |  |  |  |  |  |
| 2 | 2 | **Update conference center** |  | 107d | 2016-10-03 A | 2017-02-28 |  | 60% | 43.07d | 2016-10-03 | 2017-02-23 | 104d | 0d |  |  | 4937.2h | 2401.2h | 1,099,280 | 917,680 | 665,680 |
| 3 | 2.1 | **Update conference ctr technology** |  | 107d | 2016-10-03 A | 2017-02-28 |  | 89% | 11.26d | 2016-10-03 | 2017-02-23 | 104d | 0d |  |  | 2881.2h | 2401.2h | 713,680 | 532,080 | 665,680 |
| 4 | 2.1.1 | Specify requirements |  | 2w | 2016-10-03 A | 2016-10-14 A | 1 | 100% |  | 2016-10-03 | 2016-10-14 | 2w |  |  | IT Lead [25%] | 20h | 20h | 2,000 | 2,000 | 2,000 |
| 5 | 2.1.2 | **Contract with vendor** |  | 20d | 2016-10-17 A | 2016-11-11 A |  | 100% |  | 2016-10-17 | 2016-11-03 | 14d |  |  |  | 11.2h | 11.2h | 1,680 | 1,080 | 1,680 |
| 6 | 2.1.2.1 | Obtain proposals |  | 1w | 2016-10-17 A | 2016-10-21 A | 4 | 100% |  | 2016-10-17 | 2016-10-21 | 1w |  |  | Conf Ctr Director [5%] | 2h | 2h | 300 | 300 | 300 |
| 7 | 2.1.2.2 | Select vendor |  | 5d | 2016-10-24 A | 2016-10-28 A | 6 | 100% |  | 2016-10-24 | 2016-10-26 | 3d |  |  | Conf Ctr Director [5%] | 2h | 2h | 300 | 180 | 300 |
| 8 | 2.1.2.3 | Negotiate |  | 9d | 2016-10-31 A | 2016-11-10 A | 7 | 100% |  | 2016-10-27 | 2016-11-02 | 5d |  |  | Conf Ctr Director [10%] | 7.2h | 7.2h | 1,080 | 600 | 1,080 |
| 9 | 2.1.2.4 | Sign contracts |  | 1d | 2016-11-11 A | 2016-11-11 A | 8 | 100% |  | 2016-11-03 | 2016-11-03 | 1d |  |  |  |  |  |  |  |  |
| 10 | 2.1.3 | Design update |  | 1w | 2016-11-14 A | 2016-11-18 A | 9 | 100% |  | 2016-11-04 | 2016-11-10 | 1w |  |  | IT Contractor [75%] | 30h | 30h | 3,000 | 3,000 | 3,000 |
| 11 | 2.1.4 | Conference center design complete | milestone | 0d | 2016-11-18 A | 2016-11-18 A | 10 | 100% |  | 2016-11-10 | 2016-11-10 | 0d |  |  |  |  |  |  |  |  |
| 12 | 2.1.5 | **Install technology** |  | 20d | 2017-02-01 A | 2017-02-28 |  | 84% | 3.17d | 2017-01-24 | 2017-02-23 | 23d | 0d |  |  | 2820h | 2340h | 707,000 | 526,000 | 659,000 |
| 13 | 2.1.5.1 | Run cables |  | 10.8w | 2017-02-01 A | 2017-06-14 A | 10, 23 | 100% |  | 2017-01-24 | 2017-01-30 | 1w |  |  | IT Contractor [500%] | 2160h | 2160h | 216,000 | 20,000 | 216,000 |
| 14 | 2.1.5.2 | Set up equipment racks |  | 2d | 2017-02-07 A | 2017-02-08 A | 13 | 100% |  | 2017-01-31 | 2017-02-03 | 4d |  |  | IT Contractor [500%]; Equipment [0.1%] | 80h | 80h | 33,000 | 46,000 | 33,000 |
| 15 | 2.1.5.3 | Place equipment |  | 2.5d | 2017-02-09 A | 2017-02-13 A | 14 | 100% |  | 2017-02-06 | 2017-02-08 | 3d |  |  | IT Contractor [500%]; Equipment [0.1%] | 100h | 100h | 410,000 | 412,000 | 410,000 |
| 16 | 2.1.5.4 | Configure equipment |  | 3d | 2017-02-14 | 2017-02-16 | 15 |  |  | 2017-02-09 | 2017-02-13 | 3d | 0d |  | IT Contractor [500%] | 120h |  | 12,000 | 12,000 |  |
| 17 | 2.1.5.5 | Connect to network |  | 3d | 2017-02-17 | 2017-02-21 | 16 |  |  | 2017-02-14 | 2017-02-16 | 3d | 0d |  | IT Contractor [500%] | 120h |  | 12,000 | 12,000 |  |
| 18 | 2.1.5.6 | Test |  | 5d | 2017-02-22 | 2017-02-28 | 17 |  |  | 2017-02-17 | 2017-02-23 | 5d | 0d |  | IT Contractor [500%]; IT Lead | 240h |  | 24,000 | 24,000 |  |
| 19 | 2.2 | Technology installed | milestone | 0d | 2017-02-28 | 2017-02-28 | 18 |  |  | 2017-02-23 | 2017-02-23 | 0d | 0d |  |  |  |  |  |  |  |
| 20 | 2.3 | **Remodel spaces** |  | 52d | 2016-11-21 | 2017-01-31 |  |  |  | 2016-11-11 | 2017-01-23 | 52d | 20d |  |  | 2056h |  | 385,600 | 385,600 |  |
| 21 | 2.3.1 | Design spaces |  | 4w | 2016-11-21 | 2016-12-16 | 10 |  |  | 2016-11-11 | 2016-12-08 | 4w | 20d | 0d | Designer [75%] | 120h |  | 18,000 | 18,000 |  |
| 22 | 2.3.2 | Construct |  | 6w | 2016-12-19 | 2017-01-27 | 21 |  |  | 2016-12-09 | 2017-01-19 | 6w | 20d | 0d | Construction Team [800%]; Materials [0.1%] | 1920h |  | 365,200 | 365,200 |  |
| 23 | 2.3.3 | Complete walkthrough |  | 2d | 2017-01-30 | 2017-01-31 | 22 |  |  | 2017-01-20 | 2017-01-23 | 2d | 20d |  | Conf Ctr Director | 16h |  | 2,400 | 2,400 |  |
| 24 | 3 | **Update hotel room technology** |  | 65d | 2016-10-03 | 2016-12-30 |  |  |  | 2016-10-03 | 2016-12-30 | 65d | 42d |  |  | 1250h |  | 626,000 | 626,000 |  |
| 25 | 3.1 | Specify requirements |  | 2w | 2016-10-03 | 2016-10-14 | 4SS |  |  | 2016-10-03 | 2016-10-14 | 2w | 42d | 0d | Conf Ctr Director [20%] | 16h |  | 2,400 | 2,400 |  |
| 26 | 3.2 | Contract with vendor |  | 4w | 2016-10-17 | 2016-11-11 | 25 |  |  | 2016-10-17 | 2016-11-11 | 4w | 42d | 0d | Conf Ctr Director [2.5%] | 4h |  | 600 | 600 |  |
| 27 | 3.3 | Design update |  | 1w | 2016-11-14 | 2016-11-18 | 26 |  |  | 2016-11-14 | 2016-11-18 | 1w | 42d | 0d | IT Contractor [75%] | 30h |  | 3,000 | 3,000 |  |
| 28 | 3.4 | Install technology |  | 6w | 2016-11-21 | 2016-12-30 | 27 |  |  | 2016-11-21 | 2016-12-30 | 6w | 42d |  | IT Contractor [500%]; Equipment [0.1%] | 1200h |  | 620,000 | 620,000 |  |
| 29 | 4 | Project complete | milestone | 0d | 2017-02-28 | 2017-02-28 | 28, 18 |  |  | 2017-02-23 | 2017-02-23 | 0d | 0d |  |  |  |  |  |  |  |
